# 项目进度计划V1.0new

Schedule from MS Project, 2020-03-06 to 2020-04-02, A marks actual dates.

## Calendars

- 标准: Mon-Sun 08:00-12:00, 13:00-17:00.

## Resources

| Resource |
| --- |
| 赵正阳 |
| 郭浩隆 |
| 沈一聪 |
| 梁远志 |
| 宋冰晨 |

## Schedule

| ID | WBS | Task | Type | Duration | Start | Finish | Predecessors | Complete | Baseline start | Baseline finish | Baseline duration | Resources | Work | Actual work |
| --- | --- | --- | --- | --- | --- | --- | --- | --- | --- | --- | --- | --- | --- | --- |
| 1 | 1 | 项目开始 | milestone | 0d | 2020-03-06 A | 2020-03-06 A |  | 100% | 2020-03-06 | 2020-03-06 | 0d |  |  |  |
| 2 | 2 | **1 实验准备** |  | 14d | 2020-03-06 A | 2020-03-19 A |  | 100% | 2020-03-06 | 2020-04-02 | 28d |  | 56.5h | 56.5h |
| 3 | 2.1 | **第2-3周** |  | 7d | 2020-03-06 A | 2020-03-12 A |  | 100% | 2020-03-06 | 2020-03-12 | 7d |  | 16h | 16h |
| 4 | 2.1.1 | 1.1 第1次组会：熟悉组员、明确组长和选题 |  | 1d | 2020-03-06 A | 2020-03-06 A |  | 100% | 2020-03-06 | 2020-03-06 | 1d | 郭浩隆 [2.5%]; 梁远志 [2.5%]; 沈一聪 [2.5%]; 宋冰晨 [2.5%]; 赵正阳 [2.5%] | 1h | 1h |
| 5 | 2.1.2 | 1.2 制作实验准备汇报PPT初稿 |  | 2d | 2020-03-07 A | 2020-03-08 A | 4 | 100% | 2020-03-07 | 2020-03-08 | 2d | 赵正阳 [12.5%] | 2h | 2h |
| 6 | 2.1.3 | 1.3 第2次组会：明确各个组员调研方向和对应的PPT部分 |  | 1d | 2020-03-09 A | 2020-03-09 A | 5 | 100% | 2020-03-09 | 2020-03-09 | 1d | 郭浩隆 [2.5%]; 梁远志 [2.5%]; 沈一聪 [2.5%]; 宋冰晨 [2.5%]; 赵正阳 [2.5%] | 1h | 1h |
| 7 | 2.1.4 | 1.4 形成实验准备汇报PPT第二版 |  | 3d | 2020-03-10 A | 2020-03-12 A | 6 | 100% | 2020-03-10 | 2020-03-12 | 3d | 梁远志 [2.8%]; 沈一聪 [2.8%]; 宋冰晨 [2.8%] | 2h | 2h |
| 8 | 2.1.5 | 1.5 调研scrapy |  | 3d | 2020-03-10 A | 2020-03-12 A | 6 | 100% | 2020-03-10 | 2020-03-12 | 3d | 郭浩隆 [8.3%]; 梁远志 [8.3%]; 沈一聪 [8.3%]; 宋冰晨 [8.3%]; 赵正阳 [8.3%] | 10h | 10h |
| 9 | 2.2 | **第3-4周** |  | 7d | 2020-03-13 A | 2020-03-19 A | 3 | 100% | 2020-03-13 | 2020-03-19 | 7d |  | 40.5h | 40.5h |
| 10 | 2.2.1 | 1.6 第3次组会：分配项目计划书任务 |  | 1d | 2020-03-13 A | 2020-03-13 A |  | 100% | 2020-03-13 | 2020-03-13 | 1d | 郭浩隆 [2.5%]; 梁远志 [2.5%]; 沈一聪 [2.5%]; 宋冰晨 [2.5%]; 赵正阳 [2.5%] | 1h | 1h |
| 11 | 2.2.2 | 1.7 根据分配的任务学习scrapy，阅读源码和文档 |  | 2d | 2020-03-14 A | 2020-03-15 A | 10 | 100% | 2020-03-14 | 2020-03-15 | 2d | 郭浩隆 [12.5%]; 梁远志 [12.5%]; 沈一聪 [12.5%]; 赵正阳 [12.5%] | 8h | 8h |
| 12 | 2.2.3 | 1.8 熟悉git的使用，编写工作日志的模板和使用规范并提交至github |  | 2d | 2020-03-14 A | 2020-03-15 A | 10 | 100% | 2020-03-14 | 2020-03-15 | 2d | 宋冰晨 [15.6%] | 2.5h | 2.5h |
| 13 | 2.2.4 | 1.9 学习MS Project、调研往届计算公式 |  | 2d | 2020-03-14 A | 2020-03-15 A | 10 | 100% | 2020-03-14 | 2020-03-15 | 2d | 宋冰晨 [25%] | 4h | 4h |
| 14 | 2.2.5 | 1.10 完成计划书可视化部分 |  | 2d | 2020-03-14 A | 2020-03-15 A | 10 | 100% | 2020-03-14 | 2020-03-15 | 2d | 郭浩隆 [6.2%] | 1h | 1h |
| 15 | 2.2.6 | 1.11 完成计划书反爬虫部分 |  | 2d | 2020-03-14 A | 2020-03-15 A | 10 | 100% | 2020-03-14 | 2020-03-15 | 2d | 沈一聪 [12.5%] | 2h | 2h |
| 16 | 2.2.7 | 1.12 完成计划书1-2节 |  | 2d | 2020-03-14 A | 2020-03-15 A | 10 | 100% | 2020-03-14 | 2020-03-15 | 2d | 赵正阳 [6.2%] | 1h | 1h |
| 17 | 2.2.8 | 1.13 完成计划书的甘特图、计算公式部分 |  | 2d | 2020-03-14 A | 2020-03-15 A | 10 | 100% | 2020-03-14 | 2020-03-15 | 2d | 宋冰晨 [25%] | 4h | 4h |
| 18 | 2.2.9 | 1.14 完成计划书分布式部分 |  | 1.5d | 2020-03-14 A | 2020-03-15 A | 10 | 100% | 2020-03-14 | 2020-03-15 | 1.5d | 梁远志 [12.5%] | 1.5h | 1.5h |
| 19 | 2.2.10 | 1.15 第4次组会：明确工作日志提交时间，确定项目大体需求 |  | 1d | 2020-03-16 A | 2020-03-16 A | 11, 12, 13, 14, 15, 16, 17, 18 | 100% | 2020-03-16 | 2020-03-16 | 1d | 郭浩隆 [2.5%]; 梁远志 [2.5%]; 沈一聪 [2.5%]; 宋冰晨 [2.5%]; 赵正阳 [2.5%] | 1h | 1h |
| 20 | 2.2.11 | 1.16 调研实验6和实验7的输出，编写实验准备汇报ppt的评审意见文档 |  | 3d | 2020-03-17 A | 2020-03-19 A | 19 | 100% | 2020-03-17 | 2020-03-19 | 3d | 宋冰晨 [4.2%] | 1h | 1h |
| 21 | 2.2.12 | 1.17 整合计划书 |  | 3d | 2020-03-17 A | 2020-03-19 A | 19 | 100% | 2020-03-17 | 2020-03-19 | 3d | 赵正阳 [4.2%] | 1h | 1h |
| 22 | 2.2.13 | 1.18 完成原型爬虫程序 |  | 3d | 2020-03-17 A | 2020-03-19 A | 19 | 100% | 2020-03-17 | 2020-03-19 | 3d | 赵正阳 [20.8%] | 5h | 5h |
| 23 | 2.2.14 | 1.19 阅读原型爬虫程序，思考反爬虫改进 |  | 3d | 2020-03-17 A | 2020-03-19 A | 19 | 100% | 2020-03-17 | 2020-03-19 | 3d | 沈一聪 [12.5%] | 3h | 3h |
| 24 | 2.2.15 | 1.20 部署Scraypd和Scrapydweb |  | 3d | 2020-03-17 A | 2020-03-19 A | 19 | 100% | 2020-03-17 | 2020-03-19 | 3d | 梁远志 [8.3%] | 2h | 2h |
| 25 | 2.2.16 | 1.21 scrapy实践：编写一个基于scrapy的简单爬虫 |  | 3d | 2020-03-17 A | 2020-03-19 A | 19 | 100% | 2020-03-17 | 2020-03-19 | 3d | 郭浩隆 [10.4%] | 2.5h | 2.5h |

| ID | WBS | Task | Duration | Start | Finish | Predecessors | Complete | Baseline start | Baseline finish | Baseline duration | Resources | Work | Actual work |
| --- | --- | --- | --- | --- | --- | --- | --- | --- | --- | --- | --- | --- | --- |
| 26 | 3 | **2 软件需求分析** | 14d | 2020-03-20 A | 2020-04-02 A |  | 100% | 2020-03-20 | 2020-04-02 | 14d |  | 70h | 70h |
| 27 | 3.1 | **第4-5周** | 7d | 2020-03-20 A | 2020-03-26 A | 9 | 100% | 2020-03-20 | 2020-03-26 | 7d |  | 43h | 43h |
| 28 | 3.1.1 | 2.1 第5次组会：绘制用例图、给组员分配负责的需求分析文档的部分 | 1d | 2020-03-20 A | 2020-03-20 A |  | 100% | 2020-03-20 | 2020-03-20 | 1d | 郭浩隆 [7.5%]; 梁远志 [7.5%]; 沈一聪 [7.5%]; 宋冰晨 [7.5%]; 赵正阳 [7.5%] | 3h | 3h |
| 29 | 3.1.2 | 2.2 完成需求规格说明书第1、2节和Scrapy框架的需求分析文档 | 2d | 2020-03-21 A | 2020-03-22 A | 28 | 100% | 2020-03-21 | 2020-03-22 | 2d | 赵正阳 [31.2%] | 5h | 5h |
| 30 | 3.1.3 | 2.3 形成Web UI部分需求分析文档 | 2d | 2020-03-21 A | 2020-03-22 A | 28 | 100% | 2020-03-21 | 2020-03-22 | 2d | 宋冰晨 [12.5%] | 2h | 2h |
| 31 | 3.1.4 | 2.4 重建github目录结构，计划书更新至1.3 | 2d | 2020-03-21 A | 2020-03-22 A | 28 | 100% | 2020-03-21 | 2020-03-22 | 2d | 宋冰晨 [6.2%] | 1h | 1h |
| 32 | 3.1.5 | 2.5 更新MS Project文档至2.0 | 2d | 2020-03-21 A | 2020-03-22 A | 28 | 100% | 2020-03-21 | 2020-03-22 | 2d | 宋冰晨 [12.5%] | 2h | 2h |
| 33 | 3.1.6 | 2.6 完成web ui部分10个RUCM | 2d | 2020-03-21 A | 2020-03-22 A | 28 | 100% | 2020-03-21 | 2020-03-22 | 2d | 郭浩隆 [18.8%] | 3h | 3h |
| 34 | 3.1.7 | 2.7 完成Scrapyd需求分析文档、RUCM图、数据库部分文档 | 2d | 2020-03-21 A | 2020-03-22 A | 28 | 100% | 2020-03-21 | 2020-03-22 | 2d | 梁远志 [43.8%] | 7h | 7h |
| 35 | 3.1.8 | 2.8 完成需求分析的后端部分以及反爬虫部分文档 | 2d | 2020-03-21 A | 2020-03-22 A | 28 | 100% | 2020-03-21 | 2020-03-22 | 2d | 沈一聪 [31.2%] | 5h | 5h |
| 36 | 3.1.9 | 2.9 第6次组会：组员各自制作需求分析汇报PPT相应的部分 | 1d | 2020-03-23 A | 2020-03-23 A | 29, 30, 31, 32, 33, 34, 35 | 100% | 2020-03-23 | 2020-03-23 | 1d | 郭浩隆 [1.2%]; 梁远志 [1.2%]; 沈一聪 [1.2%]; 宋冰晨 [1.2%]; 赵正阳 [1.2%] | 0.5h | 0.5h |
| 37 | 3.1.10 | 2.10 完成Scrapyd及实验七部分PPT | 2d | 2020-03-24 A | 2020-03-25 A | 36 | 100% | 2020-03-24 | 2020-03-25 | 2d | 梁远志 [12.5%] | 2h | 2h |
| 38 | 3.1.11 | 2.11 完成后端及反爬虫部分PPT | 2d | 2020-03-24 A | 2020-03-25 A | 36 | 100% | 2020-03-24 | 2020-03-25 | 2d | 沈一聪 [12.5%] | 2h | 2h |
| 39 | 3.1.12 | 2.12 形成需求规格说明书1.0 | 2d | 2020-03-24 A | 2020-03-25 A | 36 | 100% | 2020-03-24 | 2020-03-25 | 2d | 赵正阳 [12.5%] | 2h | 2h |
| 40 | 3.1.13 | 2.13 完成web ui原型1.0版本 | 2d | 2020-03-24 A | 2020-03-25 A | 36 | 100% | 2020-03-24 | 2020-03-25 | 2d | 宋冰晨 [37.5%] | 6h | 6h |
| 41 | 3.1.14 | 2.14 改进计划书至1.4 | 2d | 2020-03-24 A | 2020-03-25 A | 36 | 100% | 2020-03-24 | 2020-03-25 | 2d | 郭浩隆 [9.4%] | 1.5h | 1.5h |
| 42 | 3.1.15 | 2.15 整合完成汇报ppt1.0版本 | 1d | 2020-03-26 A | 2020-03-26 A | 37, 38, 39, 40, 41 | 100% | 2020-03-26 | 2020-03-26 | 1d | 赵正阳 [12.5%] | 1h | 1h |
| 43 | 3.2 | **第5-6周** | 7d | 2020-03-27 A | 2020-04-02 A | 27 | 100% | 2020-03-27 | 2020-04-02 | 7d |  | 27h | 27h |
| 44 | 3.2.1 | 2.16 第7次组会：确定需求规格说明书改分工、分配需求评审表格设计和实验8任务 | 1d | 2020-03-27 A | 2020-03-27 A |  | 100% | 2020-03-27 | 2020-03-27 | 1d | 郭浩隆 [2.5%]; 梁远志 [2.5%]; 沈一聪 [2.5%]; 宋冰晨 [2.5%]; 赵正阳 [2.5%] | 1h | 1h |
| 45 | 3.2.2 | 2.17 更新MS Project文档至3.0 | 2d | 2020-03-28 A | 2020-03-29 A | 44 | 100% | 2020-03-28 | 2020-03-29 | 2d | 宋冰晨 [6.2%] | 1h | 1h |
| 46 | 3.2.3 | 2.18 扩充需求分析文档的项目背景、用户特点、假定及约束 | 2d | 2020-03-28 A | 2020-03-29 A | 44 | 100% | 2020-03-28 | 2020-03-29 | 2d | 宋冰晨 [12.5%] | 2h | 2h |
| 47 | 3.2.4 | 2.19 调研Django | 2d | 2020-03-28 A | 2020-03-29 A | 44 | 100% | 2020-03-28 | 2020-03-29 | 2d | 赵正阳 [25%] | 4h | 4h |
| 48 | 3.2.5 | 2.20 形成工作量统计分析报告v1.0 | 2d | 2020-03-28 A | 2020-03-29 A | 44 | 100% | 2020-03-28 | 2020-03-29 | 2d | 赵正阳 [9.4%] | 1.5h | 1.5h |
| 49 | 3.2.6 | 2.21 补充了Scrapy框架需求分析的文字描述 | 2d | 2020-03-28 A | 2020-03-29 A | 44 | 100% | 2020-03-28 | 2020-03-29 | 2d | 赵正阳 [6.2%] | 1h | 1h |
| 50 | 3.2.7 | 2.22 扩充需求分析文档的后端需求RUCM文字说明、业务需求 | 2d | 2020-03-28 A | 2020-03-29 A | 44 | 100% | 2020-03-28 | 2020-03-29 | 2d | 沈一聪 [12.5%] | 2h | 2h |
| 51 | 3.2.8 | 2.23 完成需求分析评审表的设计 | 2d | 2020-03-28 A | 2020-03-29 A | 44 | 100% | 2020-03-28 | 2020-03-29 | 2d | 沈一聪 [12.5%] | 2h | 2h |
| 52 | 3.2.9 | 2.24 添加了Scrapyd的介绍、添加了各个RUCM的文字说明 | 2d | 2020-03-28 A | 2020-03-29 A | 44 | 100% | 2020-03-28 | 2020-03-29 | 2d | 梁远志 [12.5%] | 2h | 2h |
| 53 | 3.2.10 | 2.25 扩充web ui部分RUCM的文字描述 | 2d | 2020-03-28 A | 2020-03-29 A | 44 | 100% | 2020-03-28 | 2020-03-29 | 2d | 郭浩隆 [15.6%] | 2.5h | 2.5h |
| 54 | 3.2.11 | 2.26 第8次组会：确定编码、PPT分工 | 1d | 2020-03-30 A | 2020-03-30 A | 45, 46, 47, 48, 49, 50, 51, 52, 53 | 100% | 2020-03-30 | 2020-03-30 | 1d | 郭浩隆 [2.5%]; 梁远志 [2.5%]; 沈一聪 [2.5%]; 宋冰晨 [2.5%]; 赵正阳 [2.5%] | 1h | 1h |
| 55 | 3.2.12 | 2.27 完成需求规格说明书v1.1 | 2d | 2020-03-31 A | 2020-04-01 A | 54 | 100% | 2020-03-31 | 2020-04-01 | 2d | 赵正阳 [6.2%] | 1h | 1h |
| 56 | 3.2.13 | 2.28 完成需求分析评审表部分的PPT制作、练习PPT展示 | 2d | 2020-03-31 A | 2020-04-01 A | 54 | 100% | 2020-03-31 | 2020-04-01 | 2d | 沈一聪 [12.5%] | 2h | 2h |
| 57 | 3.2.14 | 2.29 完成实验6初始数据的展示部分PPT制作 | 2d | 2020-03-31 A | 2020-04-01 A | 54 | 100% | 2020-03-31 | 2020-04-01 | 2d | 宋冰晨 [12.5%] | 2h | 2h |
| 58 | 3.2.15 | 2.30 制作了实验7的展示幻灯片 | 2d | 2020-03-31 A | 2020-04-01 A | 54 | 100% | 2020-03-31 | 2020-04-01 | 2d | 梁远志 [6.2%] | 1h | 1h |
| 59 | 3.2.16 | 2.31 完成实验8的PPT部分及整合工作，形成第六周展示PPT | 1d | 2020-04-02 A | 2020-04-02 A | 55, 56, 57, 58 | 100% | 2020-04-02 | 2020-04-02 | 1d | 赵正阳 [12.5%] | 1h | 1h |
